# 4662/4663 CFe拓展坞 DVT阶段

Schedule from a web Gantt chart, 2024-08-07 to 2024-10-16.
Saturdays and Sundays are off

## Schedule

| ID | WBS | Task | Duration | Start | Finish | Predecessors | inPeople | Status |
| --- | --- | --- | --- | --- | --- | --- | --- | --- |
| 2 | 1 | 供应商完成样品预扫 | 1d | 2024-08-07 | 2024-08-07 |  | 供应商 |  |
| 3 | 2 | 打样第二版PCBＡ样品 | 10d | 2024-08-08 | 2024-08-21 | 2 | 供应商 | waiting |
| 4 | 3 | 电子料备料 | 10d | 2024-08-08 | 2024-08-21 | 2 | 供应商 | waiting |
| 5 | 4 | 样品验收测试 | 2d | 2024-08-22 | 2024-08-23 | 3 | 测试 | waiting |
| 6 | 5 | 开模前样品评审 | 1d | 2024-08-26 | 2024-08-26 | 5 | 项目组 | waiting |
| 7 | 6 | 开模 T0 样 | 11d | 2024-08-27 | 2024-09-10 | 6 | 供应商 | waiting |
| 8 | 7 | PCBA贴片 T0 | 11d | 2024-08-27 | 2024-09-10 | 6 | 供应商 | waiting |
| 9 | 8 | 包装打样 | 5d | 2024-08-29 | 2024-09-04 | 18 | 包装 | waiting |
| 10 | 9 | 试产样 质量验收测试 | 4d | 2024-09-11 | 2024-09-16 | 7, 8 | 质量 | waiting |
| 11 | 10 | 产前样签样 | 1d | 2024-09-17 | 2024-09-17 | 10 | 项目组 | waiting |
| 12 | 11 | 包装完整样品签样 | 1d | 2024-09-18 | 2024-09-18 | 11 | 项目组 | waiting |
| 13 | 12 | 包装制作 | 6d | 2024-09-19 | 2024-09-26 | 12 | 包装 | waiting |
| 14 | 13 | 首批量产 | 11d | 2024-09-27 | 2024-10-11 | 13 | 供应商 | waiting |
| 15 | 14 | 成品入仓 | 3d | 2024-10-14 | 2024-10-16 | 14 | 项目 | waiting |
| 16 | 15 | 渲染需求 | 2d | 2024-08-12 | 2024-08-13 |  | 产品 |  |
| 17 | 16 | 完成主图拍摄渲染 | 4d | 2024-08-14 | 2024-08-19 | 16 | 渲染 | waiting |
| 18 | 17 | 包装设计 | 7d | 2024-08-20 | 2024-08-28 | 17 | 包装 | waiting |
| 19 | 18 | 输出定价定量资料 | 2d | 2024-09-02 | 2024-09-03 |  | 产品 |  |
| 20 | 19 | 完成定价审批 | 1d | 2024-09-04 | 2024-09-04 | 19 | 产品 | waiting |
| 21 | 20 | 各区域认证费用确认 | 1d | 2024-09-04 | 2024-09-04 |  | 认证 |  |
| 22 | 21 | 卖点宣讲会 | 1d | 2024-09-05 | 2024-09-05 | 20 | 产品 | waiting |
| 23 | 22 | 确认各区域销售ＭＯＱ | 1d | 2024-09-05 | 2024-09-05 | 21 | 销售 | waiting |
| 24 | 23 | 销售区域确认 | 1d | 2024-09-06 | 2024-09-06 | 22, 23 | 销售 | waiting |
| 25 | 24 | 产品中英文案 | 5d | 2024-09-09 | 2024-09-13 |  | 产品 |  |
| 26 | 25 | 中台信息录入 | 1d | 2024-09-16 | 2024-09-16 |  | 市场 |  |
